# Children's Gourmet Cookbook

Schedule from MS Project, 2023-02-01 to 2023-06-26, costs in $, A marks actual dates.

## Calendars

- Standard: Mon-Fri 08:00-12:00, 13:00-17:00; Sat-Sun off.
- Monday-Wednesday: Mon-Wed 08:00-12:00, 13:00-17:00; Thu-Sun off.

## Resources

| Resource | Rate |
| --- | --- |
| John Evans | 62 |
| Katie Jordan | 48 |
| Robin Wood | 44 |
| William Flash | 55 |
| Carole Poland | 52.5 |
| Printing Service |  |
| Color Setting Services |  |
| Copyeditors |  |

## Schedule

| ID | WBS | Task | Type | Duration | Start | Finish | Predecessors | Complete | Remaining | Total slack | Free slack | Calendar | Resources | Work | Actual work | Cost | Actual cost |
| --- | --- | --- | --- | --- | --- | --- | --- | --- | --- | --- | --- | --- | --- | --- | --- | --- | --- |
| 1 | 1 | **Acquisition** |  | 25d | 2023-02-01 A | 2023-03-07 A |  | 100% |  |  |  |  |  | 200h | 200h | 10,500 | 10,500 |
| 2 | 1.1 | Manuscript received | milestone | 0d | 2023-02-01 A | 2023-02-01 A |  | 100% |  |  |  |  | Carole Poland |  |  |  |  |
| 3 | 1.2 | Content edit |  | 25d | 2023-02-01 A | 2023-03-07 A | 2 | 100% |  |  |  |  | Carole Poland | 200h | 200h | 10,500 | 10,500 |
| 4 | 1.3 | Handoff to Editorial | milestone | 0d | 2023-03-07 A | 2023-03-07 A | 3 | 100% |  |  |  |  | Carole Poland |  |  |  |  |
| 5 | 2 | **Editorial** |  | 30d | 2023-03-08 A | 2023-04-18 | 1 | 17% | 25d | 0d |  |  |  | 240h | 40h | 3,520 | 1,760 |
| 6 | 2.1 | Organize manuscript for copyedit |  | 5d | 2023-03-08 A | 2023-03-14 A |  | 100% |  |  |  |  | Robin Wood | 40h | 40h | 1,760 | 1,760 |
| 7 | 2.2 | Copyedit |  | 20d | 2023-03-15 | 2023-04-11 | 6 |  |  | 0d |  |  | Copyeditors | 160h |  |  |  |
| 8 | 2.3 | Copyedit incorp |  | 5d | 2023-04-12 | 2023-04-18 | 7 |  |  | 0d |  |  | Robin Wood | 40h |  | 1,760 |  |
| 9 | 2.4 | Handoff to Production | milestone | 0d | 2023-04-18 | 2023-04-18 | 8 |  |  | 0d |  |  | Robin Wood |  |  |  |  |
| 10 | 3 | **Design and Production** |  | 20d | 2023-03-08 | 2023-04-04 | 5SS |  |  | 10d |  |  |  | 320h |  | 16,160 |  |
| 11 | 3.1 | Cover design |  | 5d | 2023-03-08 | 2023-03-14 |  |  |  | 10d | 0d |  | William Flash | 40h |  | 2,200 |  |
| 12 | 3.2 | Set pages |  | 10d | 2023-03-15 | 2023-03-28 | 11 |  |  | 10d | 0d |  | Robin Wood; Katie Jordan | 160h |  | 7,360 |  |
| 13 | 3.3 | Interior illustration design |  | 15d | 2023-03-15 | 2023-04-04 | 12SS |  |  | 10d |  |  | William Flash | 120h |  | 6,600 |  |
| 14 | 4 | **Pages review** |  | 20d | 2023-04-19 | 2023-05-16 | 10, 5 |  |  | 0d |  |  |  | 280h |  | 14,580 |  |
| 15 | 4.1 | Proofread and index |  | 10d | 2023-04-19 | 2023-05-02 |  |  |  | 0d |  |  | John Evans; Katie Jordan | 160h |  | 8,800 |  |
| 16 | 4.2 | Incorporate 1st Pages review |  | 5d | 2023-05-03 | 2023-05-09 | 15 |  |  | 0d |  |  | Carole Poland | 40h |  | 2,100 |  |
| 17 | 4.3 | Send proofed pages to Production | milestone | 0d | 2023-05-09 | 2023-05-09 | 16 |  |  | 0d |  |  | Robin Wood |  |  |  |  |
| 18 | 4.4 | Enter page corrections and index |  | 5d | 2023-05-10 | 2023-05-16 | 17 |  |  | 0d |  |  | Katie Jordan; Robin Wood | 80h |  | 3,680 |  |
| 19 | 5 | **Color prep and printing** |  | 29d | 2023-05-17 | 2023-06-26 | 14 |  |  | 0d |  |  |  | 208h |  | 5,420 |  |
| 20 | 5.1 | Send to color house |  | 1d | 2023-05-17 | 2023-05-17 |  |  |  | 0d |  | Monday-Wednesday | Carole Poland | 8h |  | 420 |  |
| 21 | 5.2 | Generate proofs |  | 5d | 2023-05-18 | 2023-05-24 | 20 |  |  | 0d |  |  | Color Setting Services | 40h |  | 5,000 |  |
| 22 | 5.3 | Print and ship |  | 20d | 2023-05-30 | 2023-06-26 | 21FS+3d |  |  | 0d |  |  | Printing Service | 160h |  |  |  |
